# Programa de Obra - Caseta Pasadena

Schedule from MS Project XML, 2026-04-13 to 2026-08-10, status date 2026-06-06, costs in $, A marks actual dates.

## Calendars

- Estándar: Mon-Fri 09:00-13:00, 15:00-19:00; Sat-Sun off.

## Resources

| Resource | Rate |
| --- | --- |
| 01 - Trazo y nivelación | 610.38 |
| 02 - Excavación por medios manuales de terreno tipo II | 2041.22 |
| 03 - Plantilla de concreto simple fc=100 kg/cm2, e=5 cm | 1243.92 |
| 04 - Cimentación de concreto ciclopeo fc=200 kg/cm2 | 7543.66 |
| 05 - Zapata ZA-4, 1.00x1.00x0.25 m, f'c=250 kg/cm2 | 32039.2 |
| 06 - Dado D-1, 0.40x0.40x0.50 m, f'c=250 kg/cm2 | 25502.8 |
| 07 - Anclas AN-1, redondo 3/4 roscado con placa 35x35 cm | 13910.2 |
| 08 - Dentellón DE-1, 20x30 cm, f'c=250 kg/cm2 | 30086.8 |
| 09 - Relleno compactado al 95% PVSM, capas de 20 cm | 2281.08 |
| 10 - Carga y acarreo de material sobrante a tiro | 271.99 |
| 11 - Losa de cimentación fc=250 kg/cm2, malla 6x6/8-8 | 21318.5 |
| 12 - Muro de block hueco 15x20x40 cm, mortero 1:3 | 109245 |
| 13 - Muro de tablaroca estándar 1/2 a dos caras | 14188.1 |
| 14 - Cadena de desplante/cerramiento 14x20 cm | 18305.1 |
| 15 - Cubierta tablacemento Durock 1/2 con triplay 1/2 | 73737.3 |
| 16 - Impermeabilizante APP poliéster gravilla 4.5 mm | 24280.2 |
| 17 - Plafón de tablaroca yeso 1/2 sobre bastidor de aluminio | 42333.3 |
| 18 - Recubrimiento de muro con piedra, acabado plaqueado | 149624 |
| 19 - Zarpeo y afine fino, mortero cemento-arena 1:4 | 4606.15 |
| 20 - Enjarre grueso interior, e=1.5-2.0 cm, mortero 1:3 | 12572.6 |
| 21 - Pintura vinílica interior a dos manos | 9035.06 |
| 22 - Loseta cerámica Metallic Gold 60x360 cm en piso | 17496.6 |
| 23 - Zócalo cerámica Metallic Gold 10x60 cm | 4186.91 |
| 24 - Resaltes de concreto fc=200 kg/cm2, e=10 cm, 30x30 cm | 1511.8 |
| 25 - Anclas de redondo liso 3/4, L=0.75 m, roscas y tuercas | 17171 |
| 26 - Placa base para columnas 5/8 8 cartabones | 11102.7 |
| 27 - Columna metálica CM-2, PTR 6x6x3/16 | 104228 |
| 28 - Placa superior de columnas 3/8 A-36, 0.10x0.10 m | 15242.9 |
| 29 - Largueros de polín doble 12, 2x12MT-14 | 45613.9 |
| 30 - Largueros de polín sencillo 12, 1x12MT-14 | 28926.9 |
| 31 - Largueros de polín sencillo 6, 1x6MT-14 | 17596.9 |
| 32 - Ángulos de conexión polín-polín 2x2x1/4 A-36 | 4240.61 |
| 33 - Solera vista p/polín perimetral, 2x1/4 | 17956.7 |
| 34 - Portón herrería-01, 7.00x2.50 m, PTR 4x2 cal.14 | 71542.4 |
| 35 - Portón herrería-02, 1.25x2.45 m, PTR 3x2, tablero pino | 51654.4 |
| 36 - Fijo herrería-06, 1.50x2.50 m, PTR 4x2 | 84939.7 |
| 37 - Puerta 0.90x2.20 m, marco pino 3x2, color blanco | 4651.28 |
| 38 - Puerta 0.80x2.20 m, marco metálico, multipanel | 4651.28 |
| 39 - Ventana V1, cancel fijo 0.60x0.60 m, doble vidrio arenado | 3510.42 |
| 40 - Ventana V2, cancel fijo 1.50x2.50 m, doble vidrio 6+6 mm | 69691.4 |
| 41 - Salida hidráulica agua fría, CPVC 1/2 | 3421.28 |
| 42 - Tubería CPVC 1/2 de alimentación | 9649.5 |
| 43 - Válvula de control multifunción bronce 1/2 | 536.04 |
| 44 - Codo 90° x 1/2 fierro galvanizado | 113.42 |
| 45 - Conexiones para medidor de flujo 1/2 | 1084.37 |
| 46 - Válvula check de columpio 1/2 | 590.98 |
| 47 - Tee fierro galvanizado 1/2 | 456.65 |
| 48 - Llave de jardín 1/2 | 356.96 |
| 49 - Niple fierro galvanizado 1/2, L=70 cm | 303.93 |
| 50 - Salida sanitaria en muro para lavabo, PVC 2 | 403.8 |
| 51 - Salida sanitaria en piso para coladera, PVC 2 | 403.8 |
| 52 - Tubería PVC sanitario 4 | 24591.9 |
| 53 - Sanitario WC Drakar mod. TTI, Helvex | 4020.64 |
| 54 - Lavabo LV Marcus, Helvex | 3937.92 |
| 55 - Llave mezcladora para lavabo Glacier Bay | 1160.05 |
| 56 - Espejo de baño 45x65 cm, marco aluminio | 1867.89 |
| 57 - Excavación manual terreno tipo II (cepa sanitaria) | 8542.26 |
| 58 - Plantilla de arena e=10 cm, compactada | 776.16 |
| 59 - Relleno compactado al 95% PVSM (cepa sanitaria) | 8456.54 |
| 60 - Prueba de hermeticidad a 1 kg/cm², 12 horas | 1404.7 |
| 61 - Juego de accesorios de baño Lostrain, 6 piezas | 2541.55 |
| 62 - Registro eléctrico para plumas de acceso, block 60x40 cm | 4100.9 |
| 63 - Excavación mecánica para tubería PVC eléctrico, 0.40 m | 2220.99 |
| 64 - Cama de arena e=10 cm para protección tubería | 185.42 |
| 65 - Tubería PVC eléctrico 1/2 | 66651 |
| 66 - Relleno compactado con cinta de precaución | 2748.38 |
| 67 - Salida eléctrica en piso, PVC 3/4 pared delgada | 3040.32 |
| 68 - Salida eléctrica en muro, PVC 3/4 pared delgada | 4372.15 |
| 69 - Salida eléctrica para lámparas de centro | 9472.5 |
| 70 - Luminaria LED 7W empotrada en plafón, Tecno Lite | 2502.95 |
| 71 - Proyector exterior LED PAR38 15W/6500K | 3341.95 |
| 72 - Salida de red/internet | 1052.52 |
| 73 - Salida de TV, conector coaxial | 526.26 |
| 74 - Salida de teléfono | 526.26 |
| 75 - Apagador de tres vías | 873.54 |
| 76 - Apagador sencillo | 313.07 |
| 77 - Contacto monofásico dúplex polarizado | 1506.44 |
| 78 - Centro de carga Square-D QO120/125G, 20 unidades | 7244.14 |
| 79 - Interruptor termomagnético SQD 1 polo, 15A | 2033.95 |
| 80 - Interruptor termomagnético SQD 2 polos, 20A | 2183.36 |
| 81 - Salida eléctrica en muro para mini split | 962.05 |
| 82 - Paso de mangueras ventana-compresor mini split, PVC 3 | 856.34 |
| 83 - Mini split inverter Midea 1.50 ton | 23683.7 |
| 84 - Barrera vehicular uso rudo | 99440 |
| 85 - Radar de detección vehicular ZKTECO VR10 PRO | 13613.6 |
| 86 - Controlador de acceso 2 puertas, biometría | 5295.18 |
| 87 - Lectora UHF vehicular 902-928 MHz, alcance 1-10 m | 19142.2 |
| 88 - Poste seccionado 3 m con base de cimentación | 15413.2 |
| 89 - Kit kiosco: lector QR Kolonus, cámara bala IP 2MP | 80795 |
| 90 - Kit videoportero IP, monitor 7 touch, cámara 2MP | 13983.8 |
| 91 - Acceso peatonal: videoportero IP | 19863.1 |
| 92 - Bobina cable UTP Cat6 exterior, 305 m | 21441.8 |
| 93 - Kit CCTV IP 8 canales | 2664 |
| 94 - Instalación y configuración de equipos | 62150 |
| 95 - Fabricación de letrero 2 x 1 | 35580.8 |

## Schedule

| ID | WBS | Task | Type | Duration | Start | Finish | Predecessors | Complete | Remaining | Total slack | Resources | Cost | Actual cost |
| --- | --- | --- | --- | --- | --- | --- | --- | --- | --- | --- | --- | --- | --- |
| 1 | 1 | **CASETA PASADENA** |  | 86d | 2026-04-13 A | 2026-08-10 |  | 42% | 50.17d | 0d |  | 1,775,093.04 | 629,660.6 |
| 2 | 1.1 | **HITOS DEL PROYECTO** |  | 86d | 2026-04-13 A | 2026-08-10 |  |  | 86d | 0d |  |  |  |
| 3 | 1.1.1 | Inicio del proyecto | milestone | 0d | 2026-04-13 A | 2026-04-13 A |  | 100% |  |  |  |  |  |
| 4 | 1.1.2 | Colado de Losa de Cimentación | milestone | 0d | 2026-05-14 A | 2026-05-14 A | 20 | 100% |  |  |  |  |  |
| 5 | 1.1.3 | Impermeabilización de cubierta | milestone | 0d | 2026-07-03 | 2026-07-03 | 27 |  |  | 26d |  |  |  |
| 6 | 1.1.4 | Inicio Sistema de Acceso | milestone | 0d | 2026-07-27 | 2026-07-27 | 103SS |  |  | 11d |  |  |  |
| 7 | 1.1.5 | Fin del Proyecto | milestone | 0d | 2026-08-10 | 2026-08-10 | 113, 115, 34, 35, 53, 52, 55, 54, 77, 69, 71, 72, 64, 96, 97, 87, 88, 101 |  |  | 0d |  |  |  |
| 8 | 1.2 | **CIMENTACION** |  | 25d | 2026-04-13 A | 2026-05-15 A |  | 100% |  |  |  | 136,849.72 | 136,849.72 |
| 9 | 1.2.1 | Trazo y nivelación |  | 2d | 2026-04-13 A | 2026-04-14 A | 3 | 100% |  |  | 01 - Trazo y nivelación | 610.38 | 610.38 |
| 10 | 1.2.2 | Excavación por medios manuales de terreno tipo II |  | 5d | 2026-04-15 A | 2026-04-21 A | 9 | 100% |  |  | 02 - Excavación por medios manuales de terreno tipo II | 2,041.22 | 2,041.22 |
| 11 | 1.2.3 | Plantilla de concreto simple fc=100 kg/cm2, e=5 cm |  | 2d | 2026-04-22 A | 2026-04-23 A | 10 | 100% |  |  | 03 - Plantilla de concreto simple fc=100 kg/cm2, e=5 cm | 1,243.92 | 1,243.92 |
| 12 | 1.2.4 | Cimentación de concreto ciclopeo fc=200 kg/cm2 |  | 5d | 2026-04-22 A | 2026-04-28 A | 10 | 100% |  |  | 04 - Cimentación de concreto ciclopeo fc=200 kg/cm2 | 7,543.66 | 7,543.66 |
| 13 | 1.2.5 | Zapata ZA-4, 1.00x1.00x0.25 m, f'c=250 kg/cm2 |  | 5d | 2026-04-24 A | 2026-04-30 A | 12SS+2d | 100% |  |  | 05 - Zapata ZA-4, 1.00x1.00x0.25 m, f'c=250 kg/cm2 | 32,039.22 | 32,039.22 |
| 14 | 1.2.6 | Dado D-1, 0.40x0.40x0.50 m, f'c=250 kg/cm2 |  | 4d | 2026-04-29 A | 2026-05-04 A | 13FS-2d | 100% |  |  | 06 - Dado D-1, 0.40x0.40x0.50 m, f'c=250 kg/cm2 | 25,502.76 | 25,502.76 |
| 15 | 1.2.7 | Anclas AN-1, redondo 3/4 roscado con placa 35x35 cm |  | 4d | 2026-04-29 A | 2026-05-04 A | 14SS | 100% |  |  | 07 - Anclas AN-1, redondo 3/4 roscado con placa 35x35 cm | 13,910.22 | 13,910.22 |
| 16 | 1.2.8 | Dentellón DE-1, 20x30 cm, f'c=250 kg/cm2 |  | 5d | 2026-05-01 A | 2026-05-07 A | 12FS+2d | 100% |  |  | 08 - Dentellón DE-1, 20x30 cm, f'c=250 kg/cm2 | 30,086.75 | 30,086.75 |
| 17 | 1.2.9 | Relleno compactado al 95% PVSM, capas de 20 cm |  | 5d | 2026-05-05 A | 2026-05-11 A | 13, 14 | 100% |  |  | 09 - Relleno compactado al 95% PVSM, capas de 20 cm | 2,281.08 | 2,281.08 |
| 18 | 1.2.10 | Carga y acarreo de material sobrante a tiro |  | 4d | 2026-05-12 A | 2026-05-15 A | 17 | 100% |  |  | 10 - Carga y acarreo de material sobrante a tiro | 271.99 | 271.99 |
| 19 | 1.2.11 | Preparacion de Losa de cimentación |  | 3d | 2026-05-08 A | 2026-05-12 A | 16 | 100% |  |  | 11 - Losa de cimentación fc=250 kg/cm2, malla 6x6/8-8 [40%] | 8,527.41 | 8,527.41 |
| 20 | 1.2.12 | Colado de Losa de cimentación |  | 1d | 2026-05-14 A | 2026-05-14 A | 19, 58, 68, 67, 76, 84 | 100% |  |  | 11 - Losa de cimentación fc=250 kg/cm2, malla 6x6/8-8 [60%] | 12,791.11 | 12,791.11 |
| 21 | 1.3 | **ALBAÑILERIA** |  | 45d | 2026-05-15 A | 2026-07-16 |  | 81% | 8.71d | 0d |  | 141,737.89 | 127,549.75 |
| 22 | 1.3.1 | Muro de block hueco 15x20x40 cm, mortero 1:3 |  | 15d | 2026-05-15 A | 2026-06-04 A | 20 | 100% |  |  | 12 - Muro de block hueco 15x20x40 cm, mortero 1:3 | 109,244.69 | 109,244.69 |
| 23 | 1.3.2 | Muro de tablaroca estándar 1/2 a dos caras |  | 6d | 2026-07-09 | 2026-07-16 | 22, 27, 28FS-5d |  |  | 0d | 13 - Muro de tablaroca estándar 1/2 a dos caras | 14,188.14 |  |
| 24 | 1.3.3 | Cadena de desplante/cerramiento 14x20 cm |  | 10d | 2026-05-22 A | 2026-06-04 A | 22SS+5d | 100% |  |  | 14 - Cadena de desplante/cerramiento 14x20 cm | 18,305.06 | 18,305.06 |

| ID | WBS | Task | Duration | Start | Finish | Predecessors | Complete | Remaining | Total slack | Free slack | Resources | Cost | Actual cost |
| --- | --- | --- | --- | --- | --- | --- | --- | --- | --- | --- | --- | --- | --- |
| 25 | 1.4 | **PLAFONES** | 20d | 2026-06-18 | 2026-07-15 |  |  |  | 0d |  |  | 140,350.78 |  |
| 26 | 1.4.1 | Cubierta tablacemento Durock 1/2 con triplay 1/2 | 7d | 2026-06-18 | 2026-06-26 | 45, 46, 24 |  |  | 0d |  | 15 - Cubierta tablacemento Durock 1/2 con triplay 1/2 | 73,737.34 |  |
| 27 | 1.4.2 | Impermeabilizante APP poliéster gravilla 4.5 mm | 5d | 2026-06-29 | 2026-07-03 | 26 |  |  | 0d |  | 16 - Impermeabilizante APP poliéster gravilla 4.5 mm | 24,280.18 |  |
| 28 | 1.4.3 | Plafón de tablaroca yeso 1/2 sobre bastidor de aluminio | 8d | 2026-07-06 | 2026-07-15 | 27 |  |  | 0d |  | 17 - Plafón de tablaroca yeso 1/2 sobre bastidor de aluminio | 42,333.26 |  |
| 29 | 1.5 | **ACABADOS** | 30d | 2026-06-24 | 2026-08-04 |  |  |  | 1d |  |  | 199,033.2 |  |
| 30 | 1.5.1 | Recubrimiento de muro con piedra, acabado plaqueado | 12d | 2026-06-24 | 2026-07-09 | 22, 26FS-3d |  |  | 2d | 0d | 18 - Recubrimiento de muro con piedra, acabado plaqueado | 149,624.02 |  |
| 31 | 1.5.2 | Zarpeo y afine fino, mortero cemento-arena 1:4 | 5d | 2026-07-08 | 2026-07-14 | 32 |  |  | 0d |  | 19 - Zarpeo y afine fino, mortero cemento-arena 1:4 | 4,606.15 |  |
| 32 | 1.5.3 | Enjarre grueso interior, e=1.5-2.0 cm, mortero 1:3 | 7d | 2026-06-29 | 2026-07-07 | 22, 26 |  |  | 0d |  | 20 - Enjarre grueso interior, e=1.5-2.0 cm, mortero 1:3 | 12,572.62 |  |
| 33 | 1.5.4 | Pintura vinílica interior a dos manos | 5d | 2026-07-17 | 2026-07-23 | 31, 30, 23, 36, 89, 90, 91, 92, 93, 94 |  |  | 0d |  | 21 - Pintura vinílica interior a dos manos | 9,035.06 |  |
| 34 | 1.5.5 | Loseta cerámica Metallic Gold 60x360 cm en piso | 10d | 2026-07-22 | 2026-08-04 | 33FS-2d |  |  | 0d |  | 22 - Loseta cerámica Metallic Gold 60x360 cm en piso | 17,496.64 |  |
| 35 | 1.5.6 | Zóclo cerámica Metallic Gold 10x60 cm | 5d | 2026-07-29 | 2026-08-04 | 34SS+5d |  |  | 1d | 0d | 23 - Zócalo cerámica Metallic Gold 10x60 cm | 4,186.91 |  |
| 36 | 1.5.7 | Resaltes de concreto fc=200 kg/cm2, e=10 cm, 30x30 cm | 3d | 2026-07-10 | 2026-07-14 | 30 |  |  | 2d |  | 24 - Resaltes de concreto fc=200 kg/cm2, e=10 cm, 30x30 cm | 1,511.8 |  |
| 37 | 1.6 | **ESTRUCTURA TECHUMBRE** | 32d | 2026-05-05 A | 2026-06-17 |  | 71% | 9.14d | 0d |  |  | 262,079.24 | 218,833.13 |
| 38 | 1.6.1 | Anclas de redondo liso 3/4, L=0.75 m, roscas y tuercas | 3d | 2026-05-05 A | 2026-05-07 A | 14 | 100% |  |  |  | 25 - Anclas de redondo liso 3/4, L=0.75 m, roscas y tuercas | 17,171.04 | 17,171.04 |
| 39 | 1.6.2 | Placa base para columnas 5/8 8 cartabones | 4d | 2026-05-06 A | 2026-05-11 A | 38FS-2d | 100% |  |  |  | 26 - Placa base para columnas 5/8 8 cartabones | 11,102.69 | 11,102.69 |
| 40 | 1.6.3 | Columna metálica CM-2, PTR 6x6x3/16 | 9d | 2026-05-12 A | 2026-05-22 A | 39 | 100% |  |  |  | 27 - Columna metálica CM-2, PTR 6x6x3/16 | 104,227.7 | 104,227.7 |
| 41 | 1.6.4 | Placa superior de columnas 3/8 A-36, 0.10x0.10 m | 3d | 2026-05-25 A | 2026-05-27 A | 40 | 100% |  |  |  | 28 - Placa superior de columnas 3/8 A-36, 0.10x0.10 m | 15,242.86 | 15,242.86 |
| 42 | 1.6.5 | Largueros de polín doble 12, 2x12MT-14 | 8d | 2026-05-28 A | 2026-06-08 | 41 | 88% | 1d | 2d | 0d | 29 - Largueros de polín doble 12, 2x12MT-14 | 45,613.87 | 39,912.14 |
| 43 | 1.6.6 | Largueros de polín sencillo 12, 1x12MT-14 | 8d | 2026-05-28 A | 2026-06-08 | 41 | 88% | 1d | 2d | 0d | 30 - Largueros de polín sencillo 12, 1x12MT-14 | 28,926.94 | 25,311.07 |
| 44 | 1.6.7 | Largueros de polín sencillo 6, 1x6MT-14 | 6d | 2026-06-04 A | 2026-06-11 | 42FS-3d, 43FS-3d | 33% | 4d | 0d |  | 31 - Largueros de polín sencillo 6, 1x6MT-14 | 17,596.88 | 5,865.63 |
| 45 | 1.6.8 | Ángulos de conexión polín-polín 2x2x1/4 A-36 | 4d | 2026-06-12 | 2026-06-17 | 42, 43, 44 |  |  | 0d |  | 32 - Ángulos de conexión polín-polín 2x2x1/4 A-36 | 4,240.61 |  |
| 46 | 1.6.9 | Solera vista p/polín perimetral, 2x1/4 | 4d | 2026-06-12 | 2026-06-17 | 45SS |  |  | 0d |  | 33 - Solera vista p/polín perimetral, 2x1/4 | 17,956.65 |  |
| 47 | 1.7 | **HERRERIAS** | 10d | 2026-07-15 | 2026-07-28 |  |  |  | 0d |  |  | 208,136.54 |  |
| 48 | 1.7.1 | Portón herrería-01, 7.00x2.50 m, PTR 4x2 cal.14 | 10d | 2026-07-15 | 2026-07-28 | 31 |  |  | 0d |  | 34 - Portón herrería-01, 7.00x2.50 m, PTR 4x2 cal.14 | 71,542.44 |  |
| 49 | 1.7.2 | Portón herrería-02, 1.25x2.45 m, PTR 3x2, tablero pino | 10d | 2026-07-15 | 2026-07-28 | 48SS |  |  | 0d |  | 35 - Portón herrería-02, 1.25x2.45 m, PTR 3x2, tablero pino | 51,654.44 |  |
| 50 | 1.7.3 | Fijo herrería-06, 1.50x2.50 m, PTR 4x2 | 5d | 2026-07-22 | 2026-07-28 | 49FF |  |  | 0d |  | 36 - Fijo herrería-06, 1.50x2.50 m, PTR 4x2 | 84,939.66 |  |

| ID | WBS | Task | Duration | Start | Finish | Predecessors | Complete | Remaining | Total slack | Free slack | Resources | Cost | Actual cost |
| --- | --- | --- | --- | --- | --- | --- | --- | --- | --- | --- | --- | --- | --- |
| 51 | 1.8 | **CARPINTERIA Y CANCELERIA** | 11d | 2026-07-24 | 2026-08-07 |  |  |  | 0d |  |  | 82,504.42 |  |
| 52 | 1.8.1 | Puerta 0.90x2.20 m, marco pino 3x2, color blanco | 3d | 2026-08-05 | 2026-08-07 | 33, 34 |  |  | 0d |  | 37 - Puerta 0.90x2.20 m, marco pino 3x2, color blanco | 4,651.28 |  |
| 53 | 1.8.2 | Puerta 0.80x2.20 m, marco metálico, multipanel | 3d | 2026-08-05 | 2026-08-07 | 33, 34 |  |  | 0d |  | 38 - Puerta 0.80x2.20 m, marco metálico, multipanel | 4,651.28 |  |
| 54 | 1.8.3 | Ventana V1, cancel fijo 0.60x0.60 m, doble vidrio arenado | 4d | 2026-07-24 | 2026-07-29 | 33 |  |  | 4d | 0d | 39 - Ventana V1, cancel fijo 0.60x0.60 m, doble vidrio arenado | 3,510.42 |  |
| 55 | 1.8.4 | Ventana V2, cancel fijo 1.50x2.50 m, doble vidrio 6+6 mm | 4d | 2026-07-24 | 2026-07-29 | 33 |  |  | 4d | 0d | 40 - Ventana V2, cancel fijo 1.50x2.50 m, doble vidrio 6+6 mm | 69,691.44 |  |
| 56 | 1.9 | **INSTALACIONES HIDRÁULICAS** | 78d | 2026-04-22 A | 2026-08-07 |  | 70% | 23.23d | 1d |  |  | 74,620.34 | 57,763.36 |
| 57 | 1.9.1 | Salida hidráulica agua fría, CPVC 1/2 | 8d | 2026-05-20 A | 2026-05-29 A | 58, 22SS+3d | 100% |  |  |  | 41 - Salida hidráulica agua fría, CPVC 1/2 | 3,421.28 | 3,421.28 |
| 58 | 1.9.2 | Tubería CPVC 1/2 de alimentación | 5d | 2026-05-07 A | 2026-05-13 A | 19SS-1d | 100% |  |  |  | 42 - Tubería CPVC 1/2 de alimentación | 9,649.5 | 9,649.5 |
| 59 | 1.9.3 | Válvula de control multifunción bronce 1/2 | 1d | 2026-06-26 | 2026-06-26 | 58, 60, 22FS+15d |  |  | 26d | 0d | 43 - Válvula de control multifunción bronce 1/2 | 536.04 |  |
| 60 | 1.9.4 | Codo 90° x 1/2 fierro galvanizado | 1d | 2026-05-14 A | 2026-05-14 A | 58 | 100% |  |  |  | 44 - Codo 90° x 1/2 fierro galvanizado | 113.42 | 113.42 |
| 61 | 1.9.5 | Conexiones para medidor de flujo 1/2 | 2d | 2026-07-01 | 2026-07-02 | 62 |  |  | 26d | 0d | 45 - Conexiones para medidor de flujo 1/2 | 1,084.37 |  |
| 62 | 1.9.6 | Válvula check de columpio 1/2 | 1d | 2026-06-30 | 2026-06-30 | 63 |  |  | 26d | 0d | 46 - Válvula check de columpio 1/2 | 590.98 |  |
| 63 | 1.9.7 | Tee fierro galvanizado 1/2 | 1d | 2026-06-29 | 2026-06-29 | 59 |  |  | 26d | 0d | 47 - Tee fierro galvanizado 1/2 | 456.65 |  |
| 64 | 1.9.8 | Llave de jardín 1/2 | 1d | 2026-07-03 | 2026-07-03 | 65, 61 |  |  | 26d |  | 48 - Llave de jardín 1/2 | 356.96 |  |
| 65 | 1.9.9 | Niple fierro galvanizado 1/2, L=70 cm | 1d | 2026-06-30 | 2026-06-30 | 63 |  |  | 28d | 2d | 49 - Niple fierro galvanizado 1/2, L=70 cm | 303.93 |  |
| 66 | 1.9.10 | Salida sanitaria en muro para lavabo, PVC 2 | 4d | 2026-05-05 A | 2026-05-08 A | 68 | 100% |  |  |  | 50 - Salida sanitaria en muro para lavabo, PVC 2 | 403.8 | 403.8 |
| 67 | 1.9.11 | Salida sanitaria en piso para coladera, PVC 2 | 3d | 2026-05-05 A | 2026-05-07 A | 68 | 100% |  |  |  | 51 - Salida sanitaria en piso para coladera, PVC 2 | 403.8 | 403.8 |
| 68 | 1.9.12 | Tubería PVC sanitario 4 | 4d | 2026-04-29 A | 2026-05-04 A | 74 | 100% |  |  |  | 52 - Tubería PVC sanitario 4 | 24,591.9 | 24,591.9 |
| 69 | 1.9.13 | Sanitario WC Drakar mod. TTI, Helvex | 2d | 2026-08-05 | 2026-08-06 | 68, 34, 35 |  |  | 2d |  | 53 - Sanitario WC Drakar mod. TTI, Helvex | 4,020.64 |  |
| 70 | 1.9.14 | Lavabo LV Marcus, Helvex | 2d | 2026-08-05 | 2026-08-06 | 34, 35, 66, 67, 68 |  |  | 1d | 0d | 54 - Lavabo LV Marcus, Helvex | 3,937.92 |  |
| 71 | 1.9.15 | Llave mezcladora para lavabo Glacier Bay | 1d | 2026-08-07 | 2026-08-07 | 70 |  |  | 1d |  | 55 - Llave mezcladora para lavabo Glacier Bay | 1,160.05 |  |
| 72 | 1.9.16 | Espejo de baño 45x65 cm, marco aluminio | 1d | 2026-08-07 | 2026-08-07 | 70 |  |  | 1d |  | 56 - Espejo de baño 45x65 cm, marco aluminio | 1,867.89 |  |
| 73 | 1.9.17 | Excavación manual terreno tipo II (cepa sanitaria) | 3d | 2026-04-22 A | 2026-04-24 A | 10 | 100% |  |  |  | 57 - Excavación manual terreno tipo II (cepa sanitaria) | 8,542.26 | 8,542.26 |
| 74 | 1.9.18 | Plantilla de arena e=10 cm, compactada | 2d | 2026-04-27 A | 2026-04-28 A | 73 | 100% |  |  |  | 58 - Plantilla de arena e=10 cm, compactada | 776.16 | 776.16 |
| 75 | 1.9.19 | Relleno compactado al 95% PVSM (cepa sanitaria) | 2d | 2026-05-05 A | 2026-05-06 A | 68 | 100% |  |  |  | 59 - Relleno compactado al 95% PVSM (cepa sanitaria) | 8,456.54 | 8,456.54 |
| 76 | 1.9.20 | Prueba de hermeticidad a 1 kg/cm², 12 horas | 1d | 2026-05-11 A | 2026-05-11 A | 75, 66, 67 | 100% |  |  |  | 60 - Prueba de hermeticidad a 1 kg/cm², 12 horas | 1,404.7 | 1,404.7 |
| 77 | 1.9.21 | Juego de accesorios de baño Lostrain, 6 piezas | 1d | 2026-08-07 | 2026-08-07 | 70 |  |  | 1d |  | 61 - Juego de accesorios de baño Lostrain, 6 piezas | 2,541.55 |  |

| ID | WBS | Task | Duration | Start | Finish | Predecessors | Complete | Remaining | Total slack | Free slack | Resources | Cost | Actual cost |
| --- | --- | --- | --- | --- | --- | --- | --- | --- | --- | --- | --- | --- | --- |
| 78 | 1.10 | **INSTALACIONES ELECTRICAS** | 79d | 2026-04-22 A | 2026-08-10 |  | 37% | 50.03d | 0d |  |  | 114,896.1 | 87,487.62 |
| 79 | 1.10.1 | Registro eléctrico para plumas de acceso, block 60x40 cm | 4d | 2026-06-05 A | 2026-06-10 | 20, 22 | 25% | 3d | 32d |  | 62 - Registro eléctrico para plumas de acceso, block 60x40 cm | 4,100.9 | 1,025.22 |
| 80 | 1.10.2 | Excavación mecánica para tubería PVC eléctrico, 0.40 m | 3d | 2026-04-22 A | 2026-04-24 A | 10 | 100% |  |  |  | 63 - Excavación mecánica para tubería PVC eléctrico, 0.40 m | 2,220.99 | 2,220.99 |
| 81 | 1.10.3 | Cama de arena e=10 cm para protección tubería | 1d | 2026-04-27 A | 2026-04-27 A | 80 | 100% |  |  |  | 64 - Cama de arena e=10 cm para protección tubería | 185.42 | 185.42 |
| 82 | 1.10.4 | Tubería PVC eléctrico 1/2 | 2d | 2026-04-28 A | 2026-04-29 A | 81 | 100% |  |  |  | 65 - Tubería PVC eléctrico 1/2 | 66,651 | 66,651 |
| 83 | 1.10.5 | Relleno compactado con cinta de precaución | 1d | 2026-04-30 A | 2026-04-30 A | 82 | 100% |  |  |  | 66 - Relleno compactado con cinta de precaución | 2,748.38 | 2,748.38 |
| 84 | 1.10.6 | Salida eléctrica en piso, PVC 3/4 pared delgada | 5d | 2026-04-30 A | 2026-05-06 A | 82 | 100% |  |  |  | 67 - Salida eléctrica en piso, PVC 3/4 pared delgada | 3,040.32 | 3,040.32 |
| 85 | 1.10.7 | Salida eléctrica en muro, PVC 3/4 pared delgada | 5d | 2026-05-15 A | 2026-05-21 A | 20 | 100% |  |  |  | 68 - Salida eléctrica en muro, PVC 3/4 pared delgada | 4,372.15 | 4,372.15 |
| 86 | 1.10.8 | Salida eléctrica para lámparas de centro, | 7d | 2026-07-06 | 2026-07-14 | 27 |  |  | 13d | 7d | 69 - Salida eléctrica para lámparas de centro | 9,472.5 |  |
| 87 | 1.10.9 | Luminaria LED 7W empotrada en plafón, Tecno Lite | 4d | 2026-07-24 | 2026-07-29 | 86, 33 |  |  | 6d | 0d | 70 - Luminaria LED 7W empotrada en plafón, Tecno Lite | 2,502.95 |  |
| 88 | 1.10.10 | Proyector exterior LED PAR38 15W/6500K | 2d | 2026-07-30 | 2026-07-31 | 87 |  |  | 6d |  | 71 - Proyector exterior LED PAR38 15W/6500K | 3,341.95 |  |
| 89 | 1.10.11 | Salida de red/internet | 4d | 2026-06-12 | 2026-06-17 | 22FS+5d |  |  | 21d |  | 72 - Salida de red/internet | 1,052.52 |  |
| 90 | 1.10.12 | Salida de TV, conector coaxial | 4d | 2026-06-12 | 2026-06-17 | 22FS+5d |  |  | 21d |  | 73 - Salida de TV, conector coaxial | 526.26 |  |
| 91 | 1.10.13 | Salida de teléfono | 4d | 2026-06-12 | 2026-06-17 | 22FS+5d |  |  | 21d |  | 74 - Salida de teléfono | 526.26 |  |
| 92 | 1.10.14 | Apagador de tres vías | 2d | 2026-07-13 | 2026-07-14 | 22, 32FS+3d |  |  | 2d |  | 75 - Apagador de tres vías | 873.54 |  |
| 93 | 1.10.15 | Apagador sencillo | 2d | 2026-07-13 | 2026-07-14 | 22, 32FS+3d |  |  | 2d |  | 76 - Apagador sencillo | 313.07 |  |
| 94 | 1.10.16 | Contacto monofásico dúplex polarizado | 4d | 2026-07-10 | 2026-07-15 | 22, 32FS+2d |  |  | 1d |  | 77 - Contacto monofásico dúplex polarizado | 1,506.44 |  |
| 95 | 1.10.17 | Centro de carga Square-D QO120/125G, 20 unidades | 4d | 2026-05-22 A | 2026-05-27 A | 22SS+5d | 100% |  |  |  | 78 - Centro de carga Square-D QO120/125G, 20 unidades | 7,244.14 | 7,244.14 |
| 96 | 1.10.18 | Interruptor termomagnético SQD 1 polo, 15A | 1d | 2026-08-10 | 2026-08-10 | 95, 52, 53 |  |  | 0d |  | 79 - Interruptor termomagnético SQD 1 polo, 15A | 2,033.95 |  |
| 97 | 1.10.19 | Interruptor termomagnético SQD 2 polos, 20A | 1d | 2026-08-10 | 2026-08-10 | 95, 52, 53 |  |  | 0d |  | 80 - Interruptor termomagnético SQD 2 polos, 20A | 2,183.36 |  |
| 98 | 1.11 | **SISTEMA DE AIRES ACONDICIONADOS** | 47d | 2026-06-01 A | 2026-08-04 |  | 45% | 25.64d | 4d |  |  | 25,502.09 | 1,177.02 |
| 99 | 1.11.1 | Salida eléctrica en muro para mini split | 3d | 2026-06-05 A | 2026-06-09 | 22 | 33% | 2d | 40d | 36d | 81 - Salida eléctrica en muro para mini split | 962.05 | 320.68 |
| 100 | 1.11.2 | Paso de mangueras ventana-compresor mini split, PVC 3 | 4d | 2026-06-01 A | 2026-06-04 A | 22FF | 100% |  |  |  | 82 - Paso de mangueras ventana-compresor mini split, PVC 3 | 856.34 | 856.34 |
| 101 | 1.11.3 | Mini split inverter Midea 1.50 ton | 4d | 2026-07-30 | 2026-08-04 | 99, 100, 95, 33, 54, 55 |  |  | 4d |  | 83 - Mini split inverter Midea 1.50 ton | 23,683.7 |  |

| ID | WBS | Task | Duration | Start | Finish | Predecessors | Total slack | Free slack | Resources | Cost |
| --- | --- | --- | --- | --- | --- | --- | --- | --- | --- | --- |
| 102 | 1.12 | **CONTROL DE ACCESO** | 11d | 2026-07-27 | 2026-08-10 |  | 0d |  |  | 353,801.87 |
| 103 | 1.12.1 | Barrera vehicular uso rudo, | 5d | 2026-07-27 | 2026-07-31 | 48FS-2d, 79 | 0d |  | 84 - Barrera vehicular uso rudo | 99,440 |
| 104 | 1.12.2 | Radar de detección vehicular ZKTECO VR10 | 2d | 2026-07-27 | 2026-07-28 | 103SS | 4d | 0d | 85 - Radar de detección vehicular ZKTECO VR10 PRO | 13,613.65 |
| 105 | 1.12.3 | Controlador de acceso 2 puertas, biometría | 2d | 2026-07-29 | 2026-07-30 | 104 | 4d | 2d | 86 - Controlador de acceso 2 puertas, biometría | 5,295.18 |
| 106 | 1.12.4 | Lectora UHF vehicular 902-928 MHz, alcance 1-10 m | 1d | 2026-07-31 | 2026-07-31 | 105SS, 111 | 3d |  | 87 - Lectora UHF vehicular 902-928 MHz, alcance 1-10 m | 19,142.2 |
| 107 | 1.12.5 | Poste seccionado 3 m con base de cimentación | 3d | 2026-08-03 | 2026-08-05 | 103, 111 | 0d |  | 88 - Poste seccionado 3 m con base de cimentación | 15,413.2 |
| 108 | 1.12.6 | Kit kiosco: lector QR Kolonus, cámara bala IP 2MP | 3d | 2026-08-03 | 2026-08-05 | 103, 111 | 0d |  | 89 - Kit kiosco: lector QR Kolonus, cámara bala IP 2MP | 80,795 |
| 109 | 1.12.7 | Kit videoportero IP, monitor 7 touch, cámara 2MP | 3d | 2026-08-03 | 2026-08-05 | 103, 111 | 0d |  | 90 - Kit videoportero IP, monitor 7 touch, cámara 2MP | 13,983.75 |
| 110 | 1.12.8 | Acceso peatonal: videoportero IP | 4d | 2026-08-03 | 2026-08-06 | 103, 111 | 2d |  | 91 - Acceso peatonal: videoportero IP | 19,863.14 |
| 111 | 1.12.9 | Bobina cable UTP Cat6 exterior, 305 m | 4d | 2026-07-27 | 2026-07-30 | 103SS | 1d | 0d | 92 - Bobina cable UTP Cat6 exterior, 305 m | 21,441.75 |
| 112 | 1.12.10 | Kit CCTV IP 8 canales, | 2d | 2026-07-31 | 2026-08-03 | 111 | 2d |  | 93 - Kit CCTV IP 8 canales | 2,664 |
| 113 | 1.12.11 | Instalación y configuración de equipos | 3d | 2026-08-06 | 2026-08-10 | 103, 104FS-2d, 105, 106, 107, 108, 109, 110FS-3d, 111, 112 | 0d |  | 94 - Instalación y configuración de equipos | 62,150 |
| 114 | 1.13 | **LETRERO** | 15d | 2026-07-21 | 2026-08-10 |  | 0d |  |  | 35,580.85 |
| 115 | 1.13.1 | Fabricación de letrero 2 x 1 | 15d | 2026-07-21 | 2026-08-10 | 50FS-6d | 0d |  | 95 - Fabricación de letrero 2 x 1 | 35,580.85 |
